# 中联泰国园区DCOM平台项目

Schedule from a web Gantt chart, 2025-12-30 to 2026-01-13.
Every day is a working day

## Schedule

| ID | WBS | Task | Duration | Start | Finish | Predecessors | inPeople | Status |
| --- | --- | --- | --- | --- | --- | --- | --- | --- |
| 2 | 1 | DCOM系统合同签订 | 12d | 2026-01-01 | 2026-01-12 |  | 张意&杨玉 | waiting |
| 3 | 2 | 项目立项启动及启动会议 | 1d | 2026-01-13 | 2026-01-13 | 2 | 赵红光 | waiting |
| 4 | 3 | DCOM系统硬件设备采购 | 1d | 2025-12-30 | 2025-12-30 |  | 张意&杨玉 |  |
| 5 | 4 | 硬件设备发货及海运报关 | 1d | 2025-12-30 | 2025-12-30 |  | 张意&杨玉 |  |
| 6 | 5 | 园区网络施工及设备安装 | 1d | 2025-12-30 | 2025-12-30 |  | 熊瀛 |  |
| 7 | 6 | 园区网络及设备调试 | 1d | 2025-12-30 | 2025-12-30 |  | 赵红光&熊瀛 |  |
| 8 | 7 | DCOM平台环境部署 | 1d | 2025-12-30 | 2025-12-30 |  | 谢水根&朱星 |  |
| 9 | 8 | 机房楼系统交付（一期-D1楼） | 1d | 2025-12-30 | 2025-12-30 |  | 周全（项目经理） |  |
| 10 | 9 | 机房楼系统交付（二期-D1楼） | 1d | 2025-12-30 | 2025-12-30 |  | 周全（项目经理） |  |
| 11 | 10 | 机房楼系统交付（D2楼） | 1d | 2025-12-30 | 2025-12-30 |  | 派诺 |  |
| 12 | 11 | DCOM平台南向数据接入（一期-D1楼） | 1d | 2025-12-30 | 2025-12-30 |  | 赵红光&熊瀛 |  |
| 13 | 12 | DCOM平台南向数据接入（二期-D1楼） | 1d | 2025-12-30 | 2025-12-30 |  | 赵红光&熊瀛 |  |
| 14 | 13 | DCOM平台数据上线（1#楼） | 1d | 2025-12-30 | 2025-12-30 |  | 赵红光&熊瀛 |  |
| 15 | 14 | DCOM平台数据上线（1#楼） | 1d | 2025-12-30 | 2025-12-30 |  | 赵红光&熊瀛 |  |
| 16 | 15 | DCOM北向数据上传（1#楼） | 1d | 2025-12-30 | 2025-12-30 |  | 赵红光&熊瀛 |  |
| 17 | 16 | DCOM北向数据上传（1#楼） | 1d | 2025-12-30 | 2025-12-30 |  | 赵红光&熊瀛 |  |
| 18 | 17 | DCOM平台北向数据验收 | 1d | 2025-12-30 | 2025-12-30 |  | 赵红光&熊瀛 |  |
| 19 | 18 | DCOM平台监控功能上线 | 1d | 2025-12-30 | 2025-12-30 |  | 赵红光&熊瀛 |  |
| 20 | 19 | DCOM平台访客功能上线 | 1d | 2025-12-30 | 2025-12-30 |  | 赵红光&谢水根 |  |
| 21 | 20 | DCOM平台运维功能开发 | 1d | 2025-12-30 | 2025-12-30 |  | 赵红光&谢水根 |  |
| 22 | 21 | DCOM平台功能阶段性交付 | 1d | 2025-12-30 | 2025-12-30 |  | 赵红光&谢水根 |  |
| 23 | 22 | DCOM平台验收测试 | 1d | 2025-12-30 | 2025-12-30 |  | 赵红光&谢水根 |  |
| 24 | 23 | DCOM平台培训及验收 | 1d | 2025-12-30 | 2025-12-30 |  | 赵红光&谢水根 |  |

Notes:
- 9: 预计2026/03/30交付；
- 10: 预计2026/05/30交付；
- 11: 预计2026/05/30交付；
